# Elserag Project Plan

Schedule from MS Project, 2023-11-01 to 2024-02-01, A marks actual dates.
Elserag Schedule
Elserag as A Literacy Platform for Special Needs

## Calendars

- Standard: Mon-Fri 08:00-12:00, 13:00-17:00; Sat-Sun off. Exceptions (off unless hours are given): 2024-01-21 08:00-12:00, 13:00-17:00.

## Resources

| Resource |
| --- |
| Mohamed AbdElrahman Elkhlawy |
| Amina Younis Mohamed |
| Manar Hussein Mohamed |
| Norhan Nageh Alabd |
| Omar Mohamed Elhassan |
| Sara Nabil Kamel |
| Elserag Team |

## Schedule

| ID | WBS | Task | Type | Duration | Start | Finish | Predecessors | Complete | Total slack | Constraint | Resources | Work | Actual work |
| --- | --- | --- | --- | --- | --- | --- | --- | --- | --- | --- | --- | --- | --- |
| 1 | 1 | **Part 1: Documentation and Design** |  | 55d | 2023-11-01 A | 2024-01-16 A |  | 100% |  |  | Elserag Team | 1360h | 1360h |
| 2 | 1.1 | **Gathering Information** |  | 25d | 2023-11-01 A | 2023-12-05 A |  | 100% |  |  |  | 320h | 320h |
| 3 | 1.1.1 | Research on Disabilities in general |  | 2w | 2023-11-01 A | 2023-11-14 A |  | 100% |  |  | Elserag Team | 80h | 80h |
| 4 | 1.1.2 | Research on Blindness Disabilitiey |  | 2w | 2023-11-15 A | 2023-11-28 A | 3 | 100% |  |  | Elserag Team | 80h | 80h |
| 5 | 1.1.3 | **Getting information from Specialized People** |  | 5d | 2023-11-29 A | 2023-12-05 A | 4 | 100% |  |  |  | 160h | 160h |
| 6 | 1.1.3.1 | Elnour School for Blind People |  | 1w | 2023-11-29 A | 2023-12-05 A |  | 100% |  |  | Omar Mohamed Elhassan | 40h | 40h |
| 7 | 1.1.3.2 | Elnour and Elamal School |  | 1w | 2023-11-29 A | 2023-12-05 A |  | 100% |  |  | Amina Younis Mohamed; Manar Hussein Mohamed; Norhan Nageh Alabd | 120h | 120h |
| 8 | 1.2 | Deliver Gathering Information Report | milestone | 0d | 2023-12-05 A | 2023-12-05 A | 2 | 100% |  |  | Elserag Team |  |  |
| 9 | 1.3 | **Planning** |  | 10d | 2023-12-06 A | 2023-12-19 A | 8 | 100% |  |  |  | 160h | 160h |
| 10 | 1.3.1 | Define the Project Scope and Objectives |  | 2w | 2023-12-06 A | 2023-12-19 A |  | 100% |  |  | Elserag Team | 80h | 80h |
| 11 | 1.3.2 | Develop the Project Plan |  | 2w | 2023-12-06 A | 2023-12-19 A |  | 100% |  |  | Mohamed AbdElrahman Elkhlawy | 80h | 80h |
| 12 | 1.4 | Deliver Planning Report | milestone | 0d | 2023-12-19 A | 2023-12-19 A | 9 | 100% |  |  | Elserag Team |  |  |
| 13 | 1.5 | Define the Team Skills |  | 1w | 2023-12-20 A | 2023-12-26 A | 9 | 100% |  |  | Elserag Team | 40h | 40h |
| 14 | 1.6 | Deliver Team Skills Report | milestone | 0d | 2023-12-26 A | 2023-12-26 A | 13 | 100% |  |  | Elserag Team |  |  |
| 15 | 1.7 | **Define Requirements** |  | 5d | 2023-12-27 A | 2024-01-02 A | 14 | 100% |  |  | Manar Hussein Mohamed; Norhan Nageh Alabd | 80h | 80h |
| 16 | 1.7.1 | User Requirements |  | 1w | 2023-12-27 A | 2024-01-02 A | 14 | 100% |  |  |  |  |  |
| 17 | 1.7.2 | Domain Requirements |  | 1w | 2023-12-27 A | 2024-01-02 A | 14 | 100% |  |  |  |  |  |
| 18 | 1.7.3 | Non-Functional Requirements |  | 1w | 2023-12-27 A | 2024-01-02 A | 14 | 100% |  |  |  |  |  |
| 19 | 1.8 | Deliver the Requirements Report | milestone | 0d | 2024-01-02 A | 2024-01-02 A | 15 | 100% |  |  | Elserag Team |  |  |
| 20 | 1.9 | **Design and Prototyping** |  | 10d | 2024-01-03 A | 2024-01-16 A | 19 | 100% |  |  |  | 320h | 320h |
| 21 | 1.9.1 | Design the UML for the Platform |  | 10d | 2024-01-03 A | 2024-01-16 A | 19 | 100% |  |  | Mohamed AbdElrahman Elkhlawy; Sara Nabil Kamel | 160h | 160h |
| 22 | 1.9.2 | Create intial design prototypes |  | 10d | 2024-01-03 A | 2024-01-16 A | 19 | 100% |  |  | Omar Mohamed Elhassan | 80h | 80h |
| 23 | 1.9.3 | Seek feedback from the Target Audience |  | 10d | 2024-01-03 A | 2024-01-16 A | 19 | 100% |  |  | Elserag Team | 80h | 80h |
| 24 | 1.10 | Deliver the Design Report | milestone | 0d | 2024-01-16 A | 2024-01-16 A | 20 | 100% |  |  | Elserag Team |  |  |
| 25 | 2 | Deliver and Make Discussion for Part 1 Documentation and Design |  | 1d | 2024-01-21 A | 2024-01-21 A | 1 | 100% |  | start no earlier than 2024-01-21 | Elserag Team | 8h | 8h |
| 26 | 3 | Part 2: Implementation and Documentation |  | 1d? | 2024-02-01 | 2024-02-01 |  |  | 0d | start no earlier than 2024-02-01 |  |  |  |
